Schedule from MS Project, 2016-09-05 to 2016-12-23.

## Calendars

- Standard: Mon-Fri 08:00-12:00, 13:00-17:00; Sat-Sun off.

## Resources

| Resource |
| --- |
| HuyenPT |
| VanTTC |
| DangVH |
| YenNTH |
| HaiCM |
| All team |
| SangNV |

## Schedule

| ID | WBS | Task | Type | Duration | Start | Finish | Predecessors | Total slack | Free slack | Constraint | Resources | Work |
| --- | --- | --- | --- | --- | --- | --- | --- | --- | --- | --- | --- | --- |
| 1 | 1 | **Bookaholic Social Network** |  | 80d? | 2016-09-05 08:00 | 2016-12-23 17:00 |  | 0d |  |  |  | 1616h |
| 2 | 1.1 | **Initial** |  | 9d | 2016-09-05 08:00 | 2016-09-15 17:00 |  | 8d | 0d |  |  | 344h |
| 3 | 1.1.1 | Form up team roles |  | 0.5d | 2016-09-05 08:00 | 2016-09-05 12:00 |  | 10.5d | 0d | start no earlier than 2016-09-05 08:00 | All team | 4h |
| 4 | 1.1.2 | Select project idea |  | 0.5d | 2016-09-05 13:00 | 2016-09-05 17:00 | 3 | 10.5d | 0d | start no earlier than 2016-09-05 08:00 | All team | 4h |
| 5 | 1.1.3 | **Develop project idea** |  | 6d | 2016-09-06 08:00 | 2016-09-13 17:00 | 4 | 10d | 0d |  |  | 144h |
| 6 | 1.1.3.1 | Define Project Scope |  | 0.5d | 2016-09-06 08:00 | 2016-09-06 12:00 |  | 10.5d | 0d | start no earlier than 2016-09-06 08:00 | All team | 4h |
| 7 | 1.1.3.2 | Define Project Features |  | 0.5d | 2016-09-06 08:00 | 2016-09-06 12:00 | 6SS | 10.5d | 0.5d | start no earlier than 2016-09-06 08:00 | All team | 4h |
| 8 | 1.1.3.3 | Create Project Introduction |  | 1d | 2016-09-07 08:00 | 2016-09-07 17:00 | 7 | 13d | 0d | start no earlier than 2016-09-07 08:00 | HuyenPT | 8h |
| 9 | 1.1.3.4 | Review Project Introduction |  | 0.5d | 2016-09-08 08:00 | 2016-09-08 12:00 | 8 | 13d | 0d |  | VanTTC | 4h |
| 10 | 1.1.3.5 | Update Project Introduction |  | 0.5d | 2016-09-08 13:00 | 2016-09-08 17:00 | 9 | 13d |  | start no earlier than 2016-09-08 08:00 | HuyenPT | 4h |
| 11 | 1.1.3.6 | Create Mockup (Part 1) |  | 5d | 2016-09-07 08:00 | 2016-09-13 17:00 | 7 | 10d |  | start no earlier than 2016-09-07 08:00 | HaiCM; VanTTC; YenNTH | 120h |
| 12 | 1.1.4 | **Environment** |  | 1d | 2016-09-06 08:00 | 2016-09-06 17:00 | 5SS | 15d |  |  |  | 24h |
| 13 | 1.1.4.1 | Install tools & environment |  | 0.5d | 2016-09-06 08:00 | 2016-09-06 12:00 |  | 15d | 0d | start no earlier than 2016-09-06 08:00 | DangVH; HuyenPT; VanTTC | 12h |
| 14 | 1.1.4.2 | Training using tools & environment |  | 0.5d | 2016-09-06 13:00 | 2016-09-06 17:00 | 13 | 15d |  | start no earlier than 2016-09-06 08:00 | DangVH; HuyenPT; VanTTC | 12h |
| 15 | 1.1.5 | **Technology Research (Part 1)** |  | 4d | 2016-09-09 08:00 | 2016-09-14 17:00 |  | 8d | 0d |  |  | 160h |
| 16 | 1.1.5.1 | Study .net MVC5 |  | 4d | 2016-09-09 08:00 | 2016-09-14 17:00 |  | 8d | 0d | start no earlier than 2016-09-09 08:00 | DangVH; HuyenPT; VanTTC | 96h |
| 17 | 1.1.5.2 | Study Bootstrap, HTML5, CSS3 |  | 4d | 2016-09-09 08:00 | 2016-09-14 17:00 | 16SS | 8d |  | start no earlier than 2016-09-09 08:00 | HaiCM; YenNTH | 64h |
| 18 | 1.1.6 | Kick-off meeting |  | 1d | 2016-09-15 08:00 | 2016-09-15 17:00 | 15 | 8d | 0d |  | All team | 8h |
| 19 | 1.1.7 | End of initiation phase | milestone | 0d | 2016-09-15 17:00 | 2016-09-15 17:00 | 18 | 8d |  | start no earlier than 2016-09-15 08:00 |  |  |
| 20 | 1.2 | **Implement 1** |  | 18d? | 2016-09-16 08:00 | 2016-10-11 17:00 | 2 | 3d | 0d |  |  | 576h |
| 21 | 1.2.1 | **Requirement** |  | 1d | 2016-09-16 08:00 | 2016-09-16 17:00 |  | 8d | 0d |  |  | 8h |
| 22 | 1.2.1.1 | Define User Requirement (Part 1) |  | 1d | 2016-09-16 08:00 | 2016-09-16 17:00 |  | 8d |  | start no earlier than 2016-09-16 08:00 | All team | 8h |
| 23 | 1.2.2 | **Analysis & design** |  | 13d | 2016-09-19 08:00 | 2016-10-06 08:00 | 21 | 7d |  |  |  | 340h |
| 24 | 1.2.2.1 | **Q&A Sheet** |  | 2d | 2016-09-19 08:00 | 2016-09-20 17:00 |  | 17.5d | 0d |  |  | 16h |
| 25 | 1.2.2.1.1 | Create Q&A Sheet |  | 0.5d | 2016-09-19 08:00 | 2016-09-19 12:00 |  | 17.5d | 0d | start no earlier than 2016-09-19 08:00 | YenNTH | 4h |
| 26 | 1.2.2.1.2 | Review Q&A Sheet |  | 0.3d | 2016-09-19 13:00 | 2016-09-19 15:24 | 25 | 17.5d | 0d | start no earlier than 2016-09-19 08:00 | HuyenPT | 2.4h |
| 27 | 1.2.2.1.3 | Update Q&A Sheet |  | 0.2d | 2016-09-19 15:24 | 2016-09-19 17:00 | 26 | 17.5d | 0d | start no earlier than 2016-09-19 08:00 | YenNTH | 1.6h |
| 28 | 1.2.2.1.4 | Translate Q&A Sheet to Japanese |  | 1d | 2016-09-20 08:00 | 2016-09-20 17:00 | 27 | 17.5d | 0d | start no earlier than 2016-09-20 08:00 | YenNTH | 8h |
| 29 | 1.2.2.1.5 | Complete Q&A Sheet | milestone | 0d | 2016-09-20 17:00 | 2016-09-20 17:00 | 28 | 17.5d |  |  |  |  |

| ID | WBS | Task | Type | Duration | Start | Finish | Predecessors | Total slack | Free slack | Constraint | Resources | Work |
| --- | --- | --- | --- | --- | --- | --- | --- | --- | --- | --- | --- | --- |
| 30 | 1.2.2.2 | **Create Project Plan** |  | 2d | 2016-09-19 08:00 | 2016-09-20 17:00 | 24SS | 8d | 0d |  |  | 76h |
| 31 | 1.2.2.2.1 | Create PP Review Checklist |  | 0.5d | 2016-09-19 08:00 | 2016-09-19 12:00 |  | 8d | 0d |  | YenNTH | 4h |
| 32 | 1.2.2.2.2 | Create Project Plan in MS Word |  | 1d | 2016-09-19 08:00 | 2016-09-19 17:00 | 31SS | 9d |  |  | HuyenPT | 8h |
| 33 | 1.2.2.2.3 | Create Project Schedule in .mpp file |  | 2d | 2016-09-19 08:00 | 2016-09-20 17:00 | 31SS | 8d |  |  | DangVH; VanTTC | 32h |
| 34 | 1.2.2.2.4 | Create CM Plan |  | 1d | 2016-09-19 08:00 | 2016-09-19 17:00 | 31SS | 8d | 0d |  | HaiCM | 8h |
| 35 | 1.2.2.2.5 | Review Project Plan, CM Plan, Schedule |  | 0.5d | 2016-09-20 08:00 | 2016-09-20 12:00 | 34 | 8d | 0d |  | HuyenPT; VanTTC | 8h |
| 36 | 1.2.2.2.6 | Update Project Plan, CM Plan, Schedule |  | 0.5d | 2016-09-20 13:00 | 2016-09-20 17:00 | 35 | 8d | 0d | start no earlier than 2016-09-16 08:00 | DangVH; HaiCM; HuyenPT; VanTTC | 16h |
| 37 | 1.2.2.2.7 | Complete Project Plan | milestone | 0d | 2016-09-20 17:00 | 2016-09-20 17:00 | 36 | 8d |  | start no earlier than 2016-09-20 08:00 |  |  |
| 38 | 1.2.2.3 | **User Requirement Specification (Part 1)** |  | 2d | 2016-09-21 08:00 | 2016-09-23 08:00 | 30 | 15d | 0d |  |  | 36h |
| 39 | 1.2.2.3.1 | Create SRS Review Checklist (Part 1) |  | 1d | 2016-09-21 08:00 | 2016-09-21 17:00 |  | 15d | 0d | start no earlier than 2016-09-16 08:00 | YenNTH | 8h |
| 40 | 1.2.2.3.2 | Create Software Requirement Specification (Part 1) |  | 1d | 2016-09-21 08:00 | 2016-09-21 17:00 | 39SS | 15d | 0d | start no earlier than 2016-09-16 08:00 | HuyenPT; YenNTH | 16h |
| 41 | 1.2.2.3.3 | Review Software Requirement Specification (Part 1) |  | 0.5d | 2016-09-22 08:00 | 2016-09-22 12:00 | 40 | 15d | 0d |  | VanTTC | 4h |
| 42 | 1.2.2.3.4 | Update Software Requirement Specification (Part 1) |  | 0.5d | 2016-09-22 13:00 | 2016-09-22 17:00 | 41 | 15d | 0d | start no earlier than 2016-09-15 08:00 | HuyenPT; YenNTH | 8h |
| 43 | 1.2.2.3.5 | Complete User Requirement Specification (Part 1) | milestone | 0d | 2016-09-23 08:00 | 2016-09-23 08:00 | 42 | 15d |  | start no earlier than 2016-09-23 08:00 |  |  |
| 44 | 1.2.2.4 | Create Report 1 (Part 1) |  | 1d | 2016-09-23 08:00 | 2016-09-23 17:00 | 38 | 15d | 1d |  | HuyenPT | 8h |
| 45 | 1.2.2.5 | Submit Report 1 (Part 1) | milestone | 0d | 2016-09-27 08:00 | 2016-09-27 08:00 | 44 | 14d |  | start no earlier than 2016-09-27 08:00 |  |  |
| 46 | 1.2.2.6 | **Design** |  | 5d | 2016-09-28 08:00 | 2016-10-04 17:00 | 30 | 3d |  |  |  | 196h |
| 47 | 1.2.2.6.1 | Create Architecture Design |  | 3d | 2016-09-28 08:00 | 2016-09-30 17:00 |  | 3d | 0d | start no earlier than 2016-09-28 08:00 | VanTTC | 24h |
| 48 | 1.2.2.6.2 | Create Mockup (Part 2) |  | 5d | 2016-09-28 08:00 | 2016-10-04 17:00 | 47SS | 8d |  | start no earlier than 2016-09-28 08:00 | HaiCM; VanTTC; YenNTH | 120h |
| 49 | 1.2.2.6.3 | Database Design |  | 3d | 2016-09-28 08:00 | 2016-09-30 17:00 | 47SS | 3d | 0d | start no earlier than 2016-09-28 08:00 | VanTTC | 24h |
| 50 | 1.2.2.6.4 | Class/Component Design (Part 1) |  | 1d | 2016-10-03 08:00 | 2016-10-03 17:00 | 49 | 8d | 0d |  | DangVH; HuyenPT; VanTTC | 24h |
| 51 | 1.2.2.6.5 | Create Design Review Checklist |  | 0.5d | 2016-10-04 08:00 | 2016-10-04 12:00 | 50 | 8d | 0d |  | YenNTH | 4h |
| 52 | 1.2.2.7 | Create Report 2 (Part 1) |  | 0.5d | 2016-10-04 13:00 | 2016-10-04 17:00 | 51 | 8d | 1d |  | HuyenPT | 4h |
| 53 | 1.2.2.8 | Create Coding Checklist (Part 1) |  | 0.5d | 2016-09-21 08:00 | 2016-09-21 12:00 | 24 | 17.5d |  |  | DangVH | 4h |
| 54 | 1.2.2.9 | Submit Report 2 (Part 1) | milestone | 0d | 2016-10-06 08:00 | 2016-10-06 08:00 | 52 | 7d |  | start no earlier than 2016-10-06 08:00 |  |  |

| ID | WBS | Task | Duration | Start | Finish | Predecessors | Total slack | Free slack | Constraint | Resources | Work |
| --- | --- | --- | --- | --- | --- | --- | --- | --- | --- | --- | --- |
| 55 | 1.2.3 | **Development** | 5d? | 2016-10-03 08:00 | 2016-10-07 17:00 | 49 | 3d |  |  |  | 164h |
| 56 | 1.2.3.1 | Create Unit Test Checklist (Part 1) | 0.5d | 2016-10-03 08:00 | 2016-10-03 12:00 |  | 9.5d |  |  | VanTTC | 4h |
| 57 | 1.2.3.2 | **Code Screen Module** | 5d? | 2016-10-03 08:00 | 2016-10-07 17:00 |  | 5d |  |  |  | 96h |
| 58 | 1.2.3.2.1 | "Admin Management" Screen | 1d | 2016-10-03 08:00 | 2016-10-03 17:00 |  | 5d | 0d |  | HaiCM; YenNTH | 16h |
| 59 | 1.2.3.2.2 | "Đăng Nhập"Screen | 1d? | 2016-10-03 08:00 | 2016-10-03 17:00 | 58SS | 5d | 0d |  | HaiCM; YenNTH | 16h |
| 60 | 1.2.3.2.3 | "Trang Chủ"Screen | 2d | 2016-10-04 08:00 | 2016-10-05 17:00 | 59 | 5d | 0d | start no earlier than 2016-09-19 08:00 | HaiCM; YenNTH | 32h |
| 61 | 1.2.3.2.4 | "Trang cá nhân"Screen | 1d? | 2016-10-06 08:00 | 2016-10-06 17:00 | 60 | 5d | 0d | start no earlier than 2016-09-19 08:00 | HaiCM; YenNTH | 16h |
| 62 | 1.2.3.2.5 | s | 1d | 2016-10-07 08:00 | 2016-10-07 17:00 | 61 | 5d |  |  | HaiCM; YenNTH | 16h |
| 63 | 1.2.3.3 | **Code & Unit Test** | 5d? | 2016-10-03 08:00 | 2016-10-07 17:00 |  | 3d | 0d |  |  | 64h |
| 64 | 1.2.3.3.1 | **Admin Module (Part 1)** | 1d | 2016-10-03 08:00 | 2016-10-03 17:00 |  | 3d | 0d |  |  | 16h |
| 65 | 1.2.3.3.1.1 | Book Management Feature | 0.5d | 2016-10-03 08:00 | 2016-10-03 12:00 |  | 3d | 0d |  | DangVH | 4h |
| 66 | 1.2.3.3.1.2 | Publisher Management Feature | 0.5d | 2016-10-03 08:00 | 2016-10-03 12:00 | 65SS | 3.5d |  |  | HuyenPT | 4h |
| 67 | 1.2.3.3.1.3 | Slide Management Feature | 1d | 2016-10-03 08:00 | 2016-10-03 17:00 | 65SS | 3d |  |  | HuyenPT | 8h |
| 68 | 1.2.3.3.2 | **Guest Module** | 2d | 2016-10-04 08:00 | 2016-10-05 17:00 | 64 | 3d |  |  |  | 16h |
| 69 | 1.2.3.3.2.1 | Account Register Function | 2d | 2016-10-04 08:00 | 2016-10-05 17:00 |  | 3d | 0d |  | VanTTC | 16h |
| 70 | 1.2.3.3.3 | **Reader/Author Module (Part 1)** | 2d? | 2016-10-06 08:00 | 2016-10-07 17:00 |  | 3d |  |  |  | 32h |
| 71 | 1.2.3.3.3.1 | LogIn/LogOut Feature | 1d | 2016-10-06 08:00 | 2016-10-06 17:00 | 69 | 3d | 0d |  | VanTTC | 8h |
| 72 | 1.2.3.3.3.2 | Reset Password Function | 1d | 2016-10-07 08:00 | 2016-10-07 17:00 | 71 | 3d |  |  | VanTTC | 8h |
| 73 | 1.2.3.3.3.3 | Send Mail Feature | 1d | 2016-10-06 08:00 | 2016-10-06 17:00 | 71SS | 3.5d | 0d |  | VanTTC | 8h |
| 74 | 1.2.3.3.3.4 | Edit Profile Function | 0.5d? | 2016-10-07 08:00 | 2016-10-07 12:00 | 73 | 3.5d |  |  | VanTTC | 4h |
| 75 | 1.2.3.3.3.5 | Edit avatar and cover photo | 0.5d | 2016-10-07 08:00 | 2016-10-07 12:00 | 73 | 3.5d |  |  | DangVH | 4h |
| 76 | 1.2.4 | **Testing** | 4d | 2016-10-03 08:00 | 2016-10-07 08:00 | 63SS | 5d | 0d |  |  | 36h |
| 77 | 1.2.4.1 | Create Test Plan (Part 1) | 0.5d | 2016-10-03 08:00 | 2016-10-03 12:00 |  | 7d | 0d |  | YenNTH | 4h |
| 78 | 1.2.4.2 | Create Test Plan Checklist (Part 1) | 0.5d | 2016-10-03 13:00 | 2016-10-03 17:00 | 77 | 7d | 0d |  | HaiCM | 4h |

| ID | WBS | Task | Type | Duration | Start | Finish | Predecessors | Total slack | Free slack | Constraint | Resources | Work |
| --- | --- | --- | --- | --- | --- | --- | --- | --- | --- | --- | --- | --- |
| 79 | 1.2.4.3 | **Writing Test Case (Part 1)** |  | 1d | 2016-10-04 08:00 | 2016-10-04 17:00 | 78 | 7d | 0d |  |  | 24h |
| 80 | 1.2.4.3.1 | Create Admin Module Test Case (Part 1) |  | 0.5d | 2016-10-04 08:00 | 2016-10-04 12:00 |  | 7d | 0d |  | HaiCM; YenNTH | 8h |
| 81 | 1.2.4.3.2 | Create Guest Module Test Case |  | 0.5d | 2016-10-04 13:00 | 2016-10-04 17:00 | 80 | 7d | 0d |  | HaiCM; YenNTH | 8h |
| 82 | 1.2.4.3.3 | Create Reader/Author Module Test Case (Part 1) |  | 0.5d | 2016-10-04 13:00 | 2016-10-04 17:00 | 81SS | 7d |  |  | VanTTC; YenNTH | 8h |
| 83 | 1.2.4.4 | Create Test Case Checklist (Part 1) |  | 0.5d | 2016-10-04 08:00 | 2016-10-04 12:00 | 79SS | 7.5d | 2.5d |  | YenNTH | 4h |
| 84 | 1.2.4.5 | Testing Part 1 Complete | milestone | 0d | 2016-10-07 08:00 | 2016-10-07 08:00 | 83 | 5d |  | start no earlier than 2016-10-07 08:00 |  |  |
| 85 | 1.2.5 | Create Report 3-4 (Part 1) |  | 0.5d | 2016-10-05 08:00 | 2016-10-05 12:00 | 77, 79 | 7.5d | 0d |  | HuyenPT | 4h |
| 86 | 1.2.6 | Submit Report 3 (Part 1) | milestone | 0d | 2016-10-05 12:00 | 2016-10-05 12:00 | 85 | 7.5d | 0d |  |  |  |
| 87 | 1.2.7 | Submit Report 4 (Part 1) | milestone | 0d | 2016-10-05 12:00 | 2016-10-05 12:00 | 86 | 7.5d |  |  |  |  |
| 88 | 1.2.8 | Create Quality Report (Part 1) |  | 1d? | 2016-10-07 08:00 | 2016-10-07 17:00 | 76 | 5d |  |  | HaiCM | 8h |
| 89 | 1.2.9 | Create Report 5 (Part 1) |  | 1d? | 2016-10-10 08:00 | 2016-10-10 17:00 | 63 | 3d | 0d |  | HuyenPT | 8h |
| 90 | 1.2.10 | Submit Report 5 (Part 1) | milestone | 0d | 2016-10-10 17:00 | 2016-10-10 17:00 | 89 | 3d | 0d |  |  |  |
| 91 | 1.2.11 | Evaluation |  | 1d? | 2016-10-11 08:00 | 2016-10-11 17:00 | 90 | 3d | 0d |  | SangNV | 8h |
| 92 | 1.2.12 | End Implement 1 | milestone | 0d | 2016-10-11 17:00 | 2016-10-11 17:00 | 91 | 3d |  |  |  |  |
| 93 | 1.3 | **Implement 2** |  | 31d? | 2016-10-12 08:00 | 2016-11-23 17:00 | 20 | 2d | 0d |  |  | 376h |
| 94 | 1.3.1 | **Requirement** |  | 1d? | 2016-10-12 08:00 | 2016-10-12 17:00 |  | 3d | 0d |  |  | 8h |
| 95 | 1.3.1.1 | Define User Requirement (Part 2) |  | 1d? | 2016-10-12 08:00 | 2016-10-12 17:00 |  | 3d |  |  | VanTTC | 8h |
| 96 | 1.3.2 | **Analysis & design** |  | 4d? | 2016-10-13 08:00 | 2016-10-18 17:00 | 94 | 2d | 0d |  |  | 48h |
| 97 | 1.3.2.1 | **User Requirement Specification (Part 2)** |  | 3d? | 2016-10-13 08:00 | 2016-10-18 08:00 |  | 2d | 0d |  |  | 24h |
| 98 | 1.3.2.1.1 | Create SRS Review Checklist (Part 2) |  | 1d? | 2016-10-13 08:00 | 2016-10-13 17:00 |  | 3d | 0d |  | YenNTH | 8h |
| 99 | 1.3.2.1.2 | Create Software Requirement Sepecification (Part 2) |  | 1d? | 2016-10-13 08:00 | 2016-10-13 17:00 | 98SS | 3d | 0d |  | HuyenPT | 8h |
| 100 | 1.3.2.1.3 | Review Software Requirement Specification (Part 2) |  | 0.5d | 2016-10-14 08:00 | 2016-10-14 12:00 | 99 | 3d | 0d |  | VanTTC | 4h |
| 101 | 1.3.2.1.4 | Update Software Requirement Specification (Part 2) |  | 0.5d? | 2016-10-14 13:00 | 2016-10-14 17:00 | 100 | 3d | 1d |  | HuyenPT | 4h |
| 102 | 1.3.2.1.5 | Complete Software Requirement Specification (Part 2) | milestone | 0d | 2016-10-18 08:00 | 2016-10-18 08:00 | 101 | 2d |  | start no earlier than 2016-10-18 08:00 |  |  |
| 103 | 1.3.2.2 | Create Coding Checklist (Part 2) |  | 0.5d | 2016-10-18 08:00 | 2016-10-18 12:00 | 97 | 2.5d |  |  | DangVH | 4h |
| 104 | 1.3.2.3 | Create Report 1 (Part 2) |  | 0.5d | 2016-10-18 08:00 | 2016-10-18 12:00 | 97 | 2d | 0d |  | HuyenPT | 4h |
| 105 | 1.3.2.4 | Submit Report 1 (Part 2) | milestone | 0d | 2016-10-18 12:00 | 2016-10-18 12:00 | 104 | 2d | 0d |  |  |  |

| ID | WBS | Task | Type | Duration | Start | Finish | Predecessors | Total slack | Free slack | Resources | Work |
| --- | --- | --- | --- | --- | --- | --- | --- | --- | --- | --- | --- |
| 106 | 1.3.2.5 | **Design** |  | 0.5d | 2016-10-18 13:00 | 2016-10-18 17:00 |  | 2d |  |  | 12h |
| 107 | 1.3.2.5.1 | Class/Component Design (Part 2) |  | 0.5d | 2016-10-18 13:00 | 2016-10-18 17:00 | 105 | 2d |  | DangVH; HuyenPT; VanTTC | 12h |
| 108 | 1.3.2.6 | Create Progress Report 2 (Part 2) |  | 0.5d | 2016-10-18 13:00 | 2016-10-18 17:00 | 104 | 2d | 0d | HuyenPT | 4h |
| 109 | 1.3.2.7 | Submit Report 2 (Part 2) | milestone | 0d | 2016-10-18 17:00 | 2016-10-18 17:00 | 108 | 2d |  |  |  |
| 110 | 1.3.3 | **Development** |  | 24.5d | 2016-10-19 08:00 | 2016-11-22 12:00 | 96 | 2d |  |  | 228h |
| 111 | 1.3.3.1 | **Technology Research (Part 2)** |  | 2d | 2016-10-19 08:00 | 2016-10-20 17:00 |  | 2d | 0d |  | 16h |
| 112 | 1.3.3.1.1 | .NET SignalR |  | 2d | 2016-10-19 08:00 | 2016-10-20 17:00 |  | 2d |  | HuyenPT | 16h |
| 113 | 1.3.3.2 | Create Unit Test Checklist (Part 2) |  | 0.5d | 2016-10-21 08:00 | 2016-10-21 12:00 | 111 | 2d | 0d | DangVH | 4h |
| 114 | 1.3.3.3 | **Code Screen Module** |  | 1d | 2016-10-19 08:00 | 2016-10-19 17:00 | 111SS | 27d |  |  | 16h |
| 115 | 1.3.3.3.1 | "Group Management" Screen |  | 1d | 2016-10-19 08:00 | 2016-10-19 17:00 | 58 | 27d |  | HaiCM; YenNTH | 16h |
| 116 | 1.3.3.4 | **Code & Unit Test** |  | 22d | 2016-10-21 13:00 | 2016-11-22 12:00 | 113 | 2d | 0d |  | 192h |
| 117 | 1.3.3.4.1 | **Reader/Author Module (Part 2)** |  | 22d | 2016-10-21 13:00 | 2016-11-22 12:00 |  | 2d |  |  | 192h |
| 118 | 1.3.3.4.1.1 | Normal User Search Function |  | 2d | 2016-10-21 13:00 | 2016-10-25 12:00 |  | 2d | 0d | VanTTC | 16h |
| 119 | 1.3.3.4.1.2 | Book Functions |  | 3d | 2016-10-21 13:00 | 2016-10-26 12:00 | 118SS | 2d | 0d | DangVH | 24h |
| 120 | 1.3.3.4.1.3 | Interaction Functions |  | 3d | 2016-10-26 13:00 | 2016-10-31 12:00 | 119 | 2d | 0d | VanTTC | 24h |
| 121 | 1.3.3.4.1.4 | Post Functions |  | 12d | 2016-10-31 13:00 | 2016-11-16 12:00 | 120 | 2d | 0d | HuyenPT | 96h |
| 122 | 1.3.3.4.1.5 | Group Functions |  | 4d | 2016-11-16 13:00 | 2016-11-22 12:00 | 121 | 2d |  | DangVH | 32h |
| 123 | 1.3.4 | **Testing** |  | 4d | 2016-10-21 13:00 | 2016-10-27 12:00 | 116SS | 21d | 0d |  | 72h |
| 124 | 1.3.4.1 | Create Test Plan (Part 2) |  | 0.5d | 2016-10-21 13:00 | 2016-10-21 17:00 |  | 21d | 0d | YenNTH | 4h |
| 125 | 1.3.4.2 | Create Test Plan Checklist (Part 2) |  | 0.5d | 2016-10-24 08:00 | 2016-10-24 12:00 | 124 | 21d | 0d | HaiCM | 4h |
| 126 | 1.3.4.3 | **Writing Test Case (Part 2)** |  | 3d | 2016-10-24 13:00 | 2016-10-27 12:00 | 125 | 21d | 0d |  | 48h |
| 127 | 1.3.4.3.1 | Create Reader/Author Module Test Case (Part 2) |  | 3d | 2016-10-24 13:00 | 2016-10-27 12:00 |  | 21d |  | HaiCM; YenNTH | 48h |
| 128 | 1.3.4.4 | Create Test Case Checklist (Part 2) |  | 2d | 2016-10-24 13:00 | 2016-10-26 12:00 | 126SS | 22d |  | YenNTH | 16h |
| 129 | 1.3.4.5 | Testing Part 2 Complete | milestone | 0d | 2016-10-21 13:00 | 2016-10-21 13:00 |  | 25d |  |  |  |
| 130 | 1.3.5 | Create Report 3 (Part 2) |  | 0.5d | 2016-10-27 13:00 | 2016-10-27 17:00 | 124, 126 | 21d | 0d | HuyenPT | 4h |
| 131 | 1.3.6 | Submit Report 3 (Part 2) | milestone | 0d | 2016-10-27 17:00 | 2016-10-27 17:00 | 130 | 21d | 0d |  |  |
| 132 | 1.3.7 | Submit Report 4 (Part 2) | milestone | 0d | 2016-10-27 17:00 | 2016-10-27 17:00 | 131 | 21d |  |  |  |
| 133 | 1.3.8 | Create Quality Report (Part 2) |  | 0.5d | 2016-10-27 13:00 | 2016-10-27 17:00 | 123 | 21d |  | HuyenPT | 4h |
| 134 | 1.3.9 | Create Report 5 (Part 2) |  | 0.5d | 2016-11-22 13:00 | 2016-11-22 17:00 | 116 | 2d | 0d | HuyenPT | 4h |
| 135 | 1.3.10 | Submit Report 5 (Part 2) | milestone | 0d | 2016-11-22 17:00 | 2016-11-22 17:00 | 134 | 2d | 0d |  |  |
| 136 | 1.3.11 | Evaluation |  | 1d? | 2016-11-23 08:00 | 2016-11-23 17:00 | 135 | 2d | 0d | SangNV | 8h |
| 137 | 1.3.12 | End Implement 2 | milestone | 0d | 2016-11-23 17:00 | 2016-11-23 17:00 | 136 | 2d |  |  |  |

| ID | WBS | Task | Type | Duration | Start | Finish | Predecessors | Total slack | Free slack | Resources | Work |
| --- | --- | --- | --- | --- | --- | --- | --- | --- | --- | --- | --- |
| 138 | 1.4 | **Implement 3** |  | 11.5d? | 2016-11-24 08:00 | 2016-12-09 12:00 | 93 | 1d | 0d |  | 212h |
| 139 | 1.4.1 | **Requirement** |  | 1d? | 2016-11-24 08:00 | 2016-11-24 17:00 |  | 3.5d | 0d |  | 8h |
| 140 | 1.4.1.1 | Define User Requirement (Part 3) |  | 1d? | 2016-11-24 08:00 | 2016-11-24 17:00 |  | 3.5d |  | VanTTC | 8h |
| 141 | 1.4.2 | **Analysis & design** |  | 2.5d | 2016-11-25 08:00 | 2016-11-29 12:00 | 139 | 3.5d | 0d |  | 48h |
| 142 | 1.4.2.1 | **User Requirement Specification (Part 3)** |  | 1.5d | 2016-11-25 08:00 | 2016-11-28 12:00 |  | 3.5d | 0d |  | 24h |
| 143 | 1.4.2.1.1 | Create SRS Review Checklist (Part 3) |  | 0.5d | 2016-11-25 08:00 | 2016-11-25 12:00 |  | 3.5d | 0d | YenNTH | 4h |
| 144 | 1.4.2.1.2 | Create Software Requirement Sepecification (Part 3) |  | 0.5d | 2016-11-25 08:00 | 2016-11-25 12:00 | 143SS | 3.5d | 0d | HuyenPT; YenNTH | 8h |
| 145 | 1.4.2.1.3 | Review Software Requirement Specification (Part 3) |  | 0.5d | 2016-11-25 13:00 | 2016-11-25 17:00 | 144 | 3.5d | 0d | VanTTC | 4h |
| 146 | 1.4.2.1.4 | Update Software Requirement Specification (Part 3) |  | 0.5d | 2016-11-28 08:00 | 2016-11-28 12:00 | 145 | 3.5d | 0d | HuyenPT; YenNTH | 8h |
| 147 | 1.4.2.1.5 | Complete User Requirement Specification (Part 3) | milestone | 0d | 2016-11-28 12:00 | 2016-11-28 12:00 | 146 | 3.5d |  |  |  |
| 148 | 1.4.2.2 | Create Coding Checklist (Part 3) |  | 0.5d | 2016-11-28 13:00 | 2016-11-28 17:00 | 142 | 4d |  | DangVH | 4h |
| 149 | 1.4.2.3 | Create Report 1 (Part 3) |  | 0.5d | 2016-11-28 13:00 | 2016-11-28 17:00 | 142 | 3.5d | 0d | HuyenPT | 4h |
| 150 | 1.4.2.4 | Submit Report 1 (Part 3) | milestone | 0d | 2016-11-28 17:00 | 2016-11-28 17:00 | 149 | 3.5d | 0d |  |  |
| 151 | 1.4.2.5 | **Design** |  | 0.5d | 2016-11-29 08:00 | 2016-11-29 12:00 |  | 3.5d |  |  | 12h |
| 152 | 1.4.2.5.1 | Class/Component Design (Part 3) |  | 0.5d | 2016-11-29 08:00 | 2016-11-29 12:00 | 150 | 3.5d |  | DangVH; HuyenPT; VanTTC | 12h |
| 153 | 1.4.2.6 | Create Report 2 (Part 3) |  | 0.5d | 2016-11-28 13:00 | 2016-11-28 17:00 | 149SS | 4d | 0d | HuyenPT | 4h |
| 154 | 1.4.2.7 | Submit Report 2 (Part 3) | milestone | 0d | 2016-11-28 17:00 | 2016-11-28 17:00 | 153 | 4d |  |  |  |
| 155 | 1.4.3 | **Development** |  | 4d? | 2016-11-29 13:00 | 2016-12-05 12:00 | 141 | 3.5d |  |  | 32h |
| 156 | 1.4.3.1 | Create Unit Test Checklist (Part 3) |  | 1d? | 2016-11-29 13:00 | 2016-11-30 12:00 |  | 3.5d | 0d | VanTTC | 8h |
| 157 | 1.4.3.2 | **Code & Unit Test** |  | 3d? | 2016-11-30 13:00 | 2016-12-05 12:00 | 156 | 3.5d | 0d |  | 24h |
| 158 | 1.4.3.2.1 | **Admin Module (Part 2)** |  | 3d? | 2016-11-30 13:00 | 2016-12-05 12:00 |  | 3.5d |  |  | 24h |
| 159 | 1.4.3.2.1.1 | Manage Groups Functions |  | 1d? | 2016-11-30 13:00 | 2016-12-01 12:00 |  | 3.5d | 0d | DangVH | 8h |
| 160 | 1.4.3.2.1.2 | Manage Users Account Functions |  | 1d | 2016-12-01 13:00 | 2016-12-02 12:00 | 159 | 3.5d | 0d | DangVH | 8h |
| 161 | 1.4.3.2.1.3 | Statistic Functions |  | 1d | 2016-12-02 13:00 | 2016-12-05 12:00 | 160 | 3.5d |  | DangVH | 8h |

| ID | WBS | Task | Type | Duration | Start | Finish | Predecessors | Total slack | Free slack | Constraint | Resources | Work |
| --- | --- | --- | --- | --- | --- | --- | --- | --- | --- | --- | --- | --- |
| 162 | 1.4.4 | **Testing** |  | 10d? | 2016-11-25 08:00 | 2016-12-08 17:00 |  | 1d | 0d |  |  | 104h |
| 163 | 1.4.4.1 | Create Test Plan (Part 3) |  | 0.5d | 2016-11-30 13:00 | 2016-11-30 17:00 | 157SS | 5.5d | 0d |  | YenNTH | 4h |
| 164 | 1.4.4.2 | Create Test Plan Checklist (Part 3) |  | 0.5d | 2016-12-01 08:00 | 2016-12-01 12:00 | 163 | 5.5d | 0d |  | HaiCM | 4h |
| 165 | 1.4.4.3 | **Writing Test Case (Part 3)** |  | 1d | 2016-12-01 13:00 | 2016-12-02 12:00 | 164 | 5.5d | 0d |  |  | 8h |
| 166 | 1.4.4.3.1 | Create Admin Module Test Case (Part 2) |  | 1d | 2016-12-01 13:00 | 2016-12-02 12:00 |  | 5.5d |  |  | YenNTH | 8h |
| 167 | 1.4.4.4 | Create Test Case Checklist (Part 3) |  | 1d? | 2016-12-01 13:00 | 2016-12-02 12:00 | 165SS | 5.5d |  |  | HaiCM | 8h |
| 168 | 1.4.4.5 | **Testing Round 1** |  | 5d | 2016-11-25 08:00 | 2016-12-01 17:00 | 141SS | 1d | 0d |  |  | 40h |
| 169 | 1.4.4.5.1 | Execute Test (Part 1) |  | 3.5d | 2016-11-25 08:00 | 2016-11-30 12:00 |  | 1d | 0d |  | HaiCM | 28h |
| 170 | 1.4.4.5.2 | Create Test Report (Part 1) |  | 1.5d | 2016-11-30 13:00 | 2016-12-01 17:00 | 169 | 1d |  |  | HaiCM | 12h |
| 171 | 1.4.4.6 | **Testing Round 2** |  | 5d? | 2016-12-02 08:00 | 2016-12-08 17:00 | 168 | 1d | 0d |  |  | 40h |
| 172 | 1.4.4.6.1 | Execute Test (Part 2) |  | 4d | 2016-12-02 08:00 | 2016-12-07 17:00 |  | 1d | 0d |  | HaiCM | 32h |
| 173 | 1.4.4.6.2 | Create Test Report (Part 2) |  | 1d? | 2016-12-08 08:00 | 2016-12-08 17:00 | 172 | 1d |  |  | HaiCM | 8h |
| 174 | 1.4.4.7 | Testing Part 3 Complete | milestone | 0d | 2016-12-08 17:00 | 2016-12-08 17:00 | 171 | 1d | 0d |  |  |  |
| 175 | 1.4.5 | Create Report 3 (Part 3) |  | 0.5d | 2016-12-09 08:00 | 2016-12-09 12:00 | 174 | 1d | 0d |  | HuyenPT | 4h |
| 176 | 1.4.6 | Submit Report 3 (Part 3) | milestone | 0d | 2016-12-09 12:00 | 2016-12-09 12:00 | 175 | 1d | 0d |  |  |  |
| 177 | 1.4.7 | Submit Report 4 (Part 3) | milestone | 0d | 2016-12-09 12:00 | 2016-12-09 12:00 | 176 | 1d |  | finish no earlier than 2016-09-15 17:00 |  |  |
| 178 | 1.4.8 | Create Quality Report (Part 3) |  | 0.5d | 2016-12-09 08:00 | 2016-12-09 12:00 | 162 | 1d |  |  | HuyenPT | 4h |
| 179 | 1.4.9 | Create Report 5 (Part 3) |  | 0.5d | 2016-12-05 13:00 | 2016-12-05 17:00 | 157 | 3.5d | 0d |  | HuyenPT | 4h |
| 180 | 1.4.10 | Submit Report 5 (Part 3) | milestone | 0d | 2016-12-05 17:00 | 2016-12-05 17:00 | 179 | 3.5d | 0d |  |  |  |
| 181 | 1.4.11 | Evaluation |  | 1d? | 2016-12-06 08:00 | 2016-12-06 17:00 | 180 | 3.5d | 0d |  | SangNV | 8h |
| 182 | 1.4.12 | End Implement 3 | milestone | 0d | 2016-12-06 17:00 | 2016-12-06 17:00 | 181 | 3.5d |  |  |  |  |
| 183 | 1.5 | **Termination** |  | 10.5d | 2016-12-09 13:00 | 2016-12-23 17:00 | 138 | 0d |  |  |  | 108h |
| 184 | 1.5.1 | Create lession learned |  | 0.5d | 2016-12-09 13:00 | 2016-12-09 17:00 |  | 1d | 0d |  | HuyenPT | 4h |
| 185 | 1.5.2 | **Final Report Document (Report 6)** |  | 2d | 2016-12-12 08:00 | 2016-12-13 17:00 | 184 | 1d | 0d |  |  | 48h |
| 186 | 1.5.2.1 | Create Final Report document |  | 2d | 2016-12-12 08:00 | 2016-12-13 17:00 |  | 1d | 0d |  | HuyenPT | 16h |
| 187 | 1.5.2.2 | Create Installing Guide |  | 1d | 2016-12-12 08:00 | 2016-12-12 17:00 | 186SS | 2d |  |  | DangVH | 8h |
| 188 | 1.5.2.3 | Create User Guideline |  | 1d | 2016-12-12 08:00 | 2016-12-12 17:00 | 186SS | 2d |  |  | DangVH | 8h |
| 189 | 1.5.2.4 | Create Project Result Assessment |  | 1d | 2016-12-12 08:00 | 2016-12-12 17:00 | 186SS | 2d |  |  | HuyenPT | 8h |
| 190 | 1.5.2.5 | Create Slides for Final Presentation |  | 1d | 2016-12-12 08:00 | 2016-12-12 17:00 | 186SS | 2d |  |  | All team | 8h |
| 191 | 1.5.3 | Submit all Final Documents and Source codes | milestone | 0d | 2016-12-14 08:00 | 2016-12-14 08:00 | 185 | 1d | 0d | start no earlier than 2016-12-14 08:00 |  |  |

| ID | WBS | Task | Type | Duration | Start | Finish | Predecessors | Total slack | Constraint | Resources | Work |
| --- | --- | --- | --- | --- | --- | --- | --- | --- | --- | --- | --- |
| 192 | 1.5.4 | **Pre-closing** |  | 6d | 2016-12-14 08:00 | 2016-12-21 17:00 | 191 | 1d |  |  | 48h |
| 193 | 1.5.4.1 | Trainning presentation |  | 6d | 2016-12-14 08:00 | 2016-12-21 17:00 |  | 1d |  | All team | 48h |
| 194 | 1.5.5 | **Closing** |  | 1d | 2016-12-23 08:00 | 2016-12-23 17:00 | 192 | 0d |  |  | 8h |
| 195 | 1.5.5.1 | Presentation for Capstone Project |  | 1d | 2016-12-23 08:00 | 2016-12-23 17:00 |  | 0d | start no earlier than 2016-12-23 08:00 | All team | 8h |
| 196 | 1.5.5.2 | Complete Project | milestone | 0d | 2016-12-23 17:00 | 2016-12-23 17:00 | 195 | 0d |  |  |  |
