# BSN_Schedule

Schedule from MS Project, 2016-09-05 to 2016-12-15.
Microsoft

## Calendars

- Standard: Mon-Fri 08:00-12:00, 13:00-17:00; Sat-Sun off.

## Schedule

| ID | WBS | Task | Type | Duration | Start | Finish | Predecessors | Total slack | Free slack | Constraint |
| --- | --- | --- | --- | --- | --- | --- | --- | --- | --- | --- |
| 1 | 1 | **BookSocialNetwork(BSN)** |  | 74d | 2016-09-05 | 2016-12-15 |  |  |  |  |
| 2 | 1.1 | **Initial** |  | 9d | 2016-09-05 | 2016-09-16 |  |  |  |  |
| 3 | 1.1.1 | Form up team roles |  | 0.5d | 2016-09-05 | 2016-09-05 |  | 73.5d |  |  |
| 4 | 1.1.2 | Select project idea |  | 0.5d | 2016-09-05 | 2016-09-05 |  | 73.5d |  |  |
| 5 | 1.1.3 | **Develop project idea** |  | 4d | 2016-09-06 | 2016-09-09 |  |  |  |  |
| 6 | 1.1.3.1 | Define project scope |  | 0.5d | 2016-09-06 | 2016-09-06 |  | 70.5d | 0d | finish no earlier than 2016-09-06 |
| 7 | 1.1.3.2 | Define project features |  | 0.5d | 2016-09-06 | 2016-09-06 |  | 72.5d |  |  |
| 8 | 1.1.3.3 | Create Project Introduction |  | 1d | 2016-09-07 | 2016-09-07 | 6 | 70.5d | 0d |  |
| 9 | 1.1.3.4 | Review Project Introduction |  | 0.5d | 2016-09-08 | 2016-09-08 | 8 | 70.5d |  |  |
| 10 | 1.1.3.5 | Update Project Introduction |  | 0.5d | 2016-09-08 | 2016-09-08 | 8 | 70.5d |  | start no earlier than 2016-09-08 |
| 11 | 1.1.3.6 | Create Mockup (Part 1) | manual | 3d | 2016-09-07 | 2016-09-09 |  |  |  |  |
| 12 | 1.1.4 | **Environments** |  | 1d | 2016-09-06 | 2016-09-06 |  |  |  |  |
| 13 | 1.1.4.1 | Install tools & environments |  | 0.5d | 2016-09-06 | 2016-09-06 |  | 72.5d |  |  |
| 14 | 1.1.4.2 | Trainning using tools & environments |  | 0.5d | 2016-09-06 | 2016-09-06 |  | 72.5d |  |  |
| 15 | 1.1.5 | **Technology Research (Part 1)** |  | 4d | 2016-09-09 | 2016-09-14 |  |  |  |  |
| 16 | 1.1.5.1 | Study .net MVC 5 |  | 4d | 2016-09-09 | 2016-09-14 |  | 66d |  |  |
| 17 | 1.1.5.2 | Study Bootstraps, HTML5 & CSS3 |  | 4d | 2016-09-09 | 2016-09-14 |  | 66d |  |  |
| 18 | 1.1.6 | Kick-off meeting |  | 1d | 2016-09-15 | 2016-09-15 |  | 65d |  | start no earlier than 2016-09-15 |
| 19 | 1.1.7 | End of initiation phrase | milestone, manual | 0d | 2016-09-16 | 2016-09-16 |  |  |  |  |
| 20 | 1.2 | **Implement 1** |  | 20d | 2016-09-14 | 2016-10-11 |  |  |  |  |
| 21 | 1.2.1 | **Requirement** |  | 2d | 2016-09-14 | 2016-09-15 |  |  |  |  |
| 22 | 1.2.1.1 | Define User Requirement |  | 1d? | 2016-09-14 | 2016-09-14 |  | 66d |  |  |
| 23 | 1.2.2 | **Analysis and design** |  | 19d | 2016-09-14 | 2016-10-10 |  |  |  |  |
| 24 | 1.2.2.1 | **Create Project Plan** |  | 2d | 2016-09-16 | 2016-09-19 |  |  |  |  |
| 25 | 1.2.2.1.1 | Create Project Plan in MS Word |  | 2d | 2016-09-16 | 2016-09-19 |  | 63d |  |  |
| 26 | 1.2.2.1.2 | Create Project Schedule in .mmp file |  | 2d | 2016-09-16 | 2016-09-19 |  | 63d |  |  |
| 27 | 1.2.2.1.3 | Create CM Plan |  | 1d | 2016-09-16 | 2016-09-16 |  | 63.5d | 0d |  |
| 28 | 1.2.2.1.4 | Review Project Plan, CMPlan, Schedule |  | 0.5d | 2016-09-19 | 2016-09-19 | 27 | 63.5d |  |  |
| 29 | 1.2.2.1.5 | Update Project Plan, CMPlan, Schedule |  | 0.5d | 2016-09-19 | 2016-09-19 |  | 63.5d |  | start no earlier than 2016-09-19 |
| 30 | 1.2.2.1.6 | Complete Project Plan | milestone, manual | 0d | 2016-09-19 | 2016-09-19 |  |  |  |  |

| ID | WBS | Task | Type | Duration | Start | Finish | Total slack | Constraint |
| --- | --- | --- | --- | --- | --- | --- | --- | --- |
| 31 | 1.2.2.2 | **User Requirement Specification** |  | 3d | 2016-09-16 | 2016-09-20 |  |  |
| 32 | 1.2.2.2.1 | Create User Requirement Sepecification |  | 2d | 2016-09-16 | 2016-09-19 | 63d |  |
| 33 | 1.2.2.2.2 | Review User Requirement Specification |  | 0.5d | 2016-09-20 | 2016-09-20 | 62.5d | start no earlier than 2016-09-20 |
| 34 | 1.2.2.2.3 | Update User Requirement Specification |  | 0.5d | 2016-09-20 | 2016-09-20 | 62.5d | start no earlier than 2016-09-20 |
| 35 | 1.2.2.2.4 | Complete User Requirement Specification | milestone, manual | 0d | 2016-09-20 | 2016-09-20 |  | start no earlier than 2016-09-20 |
| 36 | 1.2.2.3 | SRS/PP Review checklist |  | 1d | 2016-09-19 | 2016-09-19 | 63d | start no earlier than 2016-09-19 |
| 37 | 1.2.2.4 | **Q&A Sheet** |  | 5d? | 2016-09-19 | 2016-09-23 |  |  |
| 38 | 1.2.2.4.1 | Create Q&A sheet |  | 0.5d | 2016-09-19 | 2016-09-19 | 63.5d |  |
| 39 | 1.2.2.4.2 | Review Q&A sheet |  | 0.5d | 2016-09-19 | 2016-09-19 | 63.5d |  |
| 40 | 1.2.2.4.3 | Update Q&A |  | 1d? | 2016-09-19 | 2016-09-19 | 63d |  |
| 41 | 1.2.2.4.4 | Translate Q&A sheet to Japanese | manual | 1d | 2016-09-20 | 2016-09-20 |  |  |
| 42 | 1.2.2.5 | Create progress report 1 |  | 1d | 2016-09-20 | 2016-09-20 | 62d | start no earlier than 2016-09-20 |
| 43 | 1.2.2.6 | Submit report 1 | milestone, manual | 0d | 2016-09-20 | 2016-09-20 |  |  |
| 44 | 1.2.2.7 | **Design** |  | 10d | 2016-09-20 | 2016-10-03 |  |  |
| 45 | 1.2.2.7.1 | Create Architecture Design |  | 3d | 2016-09-20 | 2016-09-22 | 60d |  |
| 46 | 1.2.2.7.2 | Create Prototye (Part2 ) |  | 10d | 2016-09-20 | 2016-10-03 | 53d |  |
| 47 | 1.2.2.7.3 | Database Design |  | 3d | 2016-09-22 | 2016-09-26 | 58d | start no earlier than 2016-09-22 |
| 48 | 1.2.2.7.4 | Class/Component Design |  | 3d | 2016-09-27 | 2016-09-29 | 55d | start no earlier than 2016-09-27 |
| 49 | 1.2.2.7.5 | Design Review Checklist |  | 1d | 2016-09-30 | 2016-09-30 | 54d | start no earlier than 2016-09-30 |
| 50 | 1.2.2.7.6 | Create Progress report 2 |  | 1d | 2016-10-03 | 2016-10-03 | 53d | start no earlier than 2016-10-03 |
| 51 | 1.2.2.8 | Submit report 2 | milestone, manual | 0d | 2016-10-04 | 2016-10-04 |  |  |
| 52 | 1.2.3 | **Development** |  | 17d | 2016-09-14 | 2016-10-06 |  |  |
| 53 | 1.2.3.1 | **Technology Research (Part 2)** |  | 5d | 2016-09-14 | 2016-09-20 |  |  |
| 54 | 1.2.3.1.1 | Google API | manual | 1d | 2016-09-14 | 2016-09-14 |  |  |
| 55 | 1.2.3.1.2 | Facebook API | manual | 1d | 2016-09-15 | 2016-09-15 |  |  |
| 56 | 1.2.3.1.3 | .NET SignalR | manual | 3d | 2016-09-16 | 2016-09-20 |  |  |

| ID | WBS | Task | Type | Duration | Start | Finish | Predecessors | Total slack | Free slack | Constraint |
| --- | --- | --- | --- | --- | --- | --- | --- | --- | --- | --- |
| 57 | 1.2.3.2 | **Code-Unit Test & Prototypes** |  | 13d | 2016-09-20 | 2016-10-06 |  |  |  |  |
| 58 | 1.2.3.2.1 | **Admin Module ( Part 1)** |  | 1d | 2016-09-20 | 2016-09-20 |  |  |  |  |
| 59 | 1.2.3.2.1.1 | Book Managerment Feature |  | 0.5d | 2016-09-20 | 2016-09-20 |  | 62.5d |  |  |
| 60 | 1.2.3.2.1.2 | Publisher Managerment Feature |  | 0.5d? | 2016-09-20 | 2016-09-20 |  | 62.5d |  |  |
| 61 | 1.2.3.2.1.3 | Slide Managerment Feature |  | 0.5d? | 2016-09-20 | 2016-09-20 |  | 62.5d |  | start no earlier than 2016-09-20 |
| 62 | 1.2.3.2.2 | **Account Managerment Module(Part 1)** |  | 4d | 2016-09-21 | 2016-09-26 |  |  |  |  |
| 63 | 1.2.3.2.2.1 | Account Regist Function |  | 1d | 2016-09-21 | 2016-09-21 |  | 61d |  |  |
| 64 | 1.2.3.2.2.2 | LogIn/LogOut Feature |  | 3d | 2016-09-22 | 2016-09-26 |  | 58d |  | start no earlier than 2016-09-22 |
| 65 | 1.2.3.2.3 | **Recommentdation Managerment Module(Part 1)** |  | 8d | 2016-09-27 | 2016-10-06 |  |  |  |  |
| 66 | 1.2.3.2.3.1 | Management Post Feature |  | 8d | 2016-09-27 | 2016-10-06 |  | 50d |  |  |
| 67 | 1.2.3.2.3.2 | Management Comment Feature |  | 4d | 2016-09-30 | 2016-10-05 |  | 51d |  | start no earlier than 2016-09-30 |
| 68 | 1.2.3.2.4 | **Code Screen Module** |  | 7d | 2016-09-20 | 2016-09-28 |  |  |  |  |
| 69 | 1.2.3.2.4.1 | "Trang Chủ" Screen |  | 2d | 2016-09-20 | 2016-09-21 |  | 59d | 0d |  |
| 70 | 1.2.3.2.4.2 | "Trang cá nhân" Screen |  | 1d? | 2016-09-21 | 2016-09-21 |  | 60d | 0d | start no earlier than 2016-09-21 |
| 71 | 1.2.3.2.4.3 | "Đăng Nhập" Screen |  | 1d | 2016-09-22 | 2016-09-22 | 70 | 60d |  |  |
| 72 | 1.2.3.2.4.4 | "Tác giả" Screen |  | 2d | 2016-09-22 | 2016-09-23 | 69 | 59d |  |  |
| 73 | 1.2.4 | **Testing** |  | 6d | 2016-10-03 | 2016-10-10 |  |  |  |  |
| 74 | 1.2.4.1 | Create Test Plan (Part 1) |  | 1d | 2016-10-03 | 2016-10-03 |  | 53d |  |  |
| 75 | 1.2.4.2 | **Writing Test Case(Part 1)** |  | 3d? | 2016-10-03 | 2016-10-05 |  | 51d |  |  |
| 76 | 1.2.4.2.1 | Create Admin Module Test Case (Part 1) |  | 1d? | 2016-10-03 | 2016-10-03 |  | 52.5d | 0d |  |
| 77 | 1.2.4.2.2 | Create Account Managerment Module(Part 1) |  | 0.5d | 2016-10-04 | 2016-10-04 | 76 | 52.5d |  |  |
| 78 | 1.2.4.2.3 | Create Recommentdation Management Module Test Case(Part 1) |  | 1d | 2016-10-05 | 2016-10-05 |  | 51d |  | start no earlier than 2016-10-05 |
| 79 | 1.2.4.3 | Execute Test |  | 2d | 2016-10-03 | 2016-10-04 |  | 52d |  |  |
| 80 | 1.2.4.4 | Create Test Report |  | 1d? | 2016-10-03 | 2016-10-03 |  | 53d |  |  |
| 81 | 1.2.4.5 | Testing Complete (Part 1) | milestone, manual | 0d | 2016-10-10 | 2016-10-10 |  |  |  |  |
| 82 | 1.2.5 | Evalution | manual | 1d | 2016-10-11 | 2016-10-11 |  |  |  |  |
| 83 | 1.2.6 | End iterative 1 | milestone, manual | 0d | 2016-10-11 | 2016-10-11 |  |  |  |  |

| ID | WBS | Task | Type | Duration | Start | Finish | Total slack |
| --- | --- | --- | --- | --- | --- | --- | --- |
| 84 | 1.3 | **Implement 2** |  | 20d | 2016-10-12 | 2016-11-08 |  |
| 85 | 1.3.1 | Requirement | manual | 1d? | 2016-10-12 | 2016-10-12 |  |
| 86 | 1.3.2 | **Analysis and Design** |  | 1d? | 2016-10-12 | 2016-10-12 | 46d |
| 87 | 1.3.2.1 | Create Checklist |  | 1d? | 2016-10-12 | 2016-10-12 | 46d |
| 88 | 1.3.3 | **Development** |  | 2d? | 2016-10-12 | 2016-10-13 | 0d |
| 89 | 1.3.3.1 | **Research(Part 3)** |  | 1d? | 2016-10-12 | 2016-10-12 | 0d |
| 90 | 1.3.3.1.1 | Auto Mail | manual | 1d? | 2016-10-12 | 2016-10-12 |  |
| 91 | 1.3.3.2 | **Code-Unit Test & Prototypes** |  | 1d? | 2016-10-13 | 2016-10-13 |  |
| 92 | 1.3.3.2.1 | **Group Managerment Module** |  | 1d? | 2016-10-13 | 2016-10-13 | 45d |
| 93 | 1.3.3.2.1.1 | Group Creating Function |  | 1d? | 2016-10-13 | 2016-10-13 | 45d |
| 94 | 1.3.3.2.1.2 | Group Information Editing Function |  | 1d? | 2016-10-13 | 2016-10-13 | 45d |
| 95 | 1.3.3.2.1.3 | Group Add New Member Feature |  | 1d? | 2016-10-13 | 2016-10-13 | 45d |
| 96 | 1.3.3.2.1.4 | Group Post Manage Feature |  | 1d? | 2016-10-13 | 2016-10-13 | 45d |
| 97 | 1.3.3.2.1.5 | Group Delete Function |  | 1d? | 2016-10-13 | 2016-10-13 | 45d |
| 98 | 1.3.3.2.2 | **Other Module** |  | 1d? | 2016-10-13 | 2016-10-13 | 45d |
| 99 | 1.3.3.2.2.1 | User Search Function |  | 1d? | 2016-10-13 | 2016-10-13 | 45d |
| 100 | 1.3.3.2.2.2 | User Rate Book Function |  | 1d? | 2016-10-13 | 2016-10-13 | 45d |
| 101 | 1.3.4 | **Testing** |  | 1d? | 2016-10-12 | 2016-10-12 | 0d |
| 102 | 1.3.4.1 | Create Test Plan (Part 2) |  | 1d? | 2016-10-12 | 2016-10-12 | 46d |
| 103 | 1.3.4.2 | **Writing Test Case(Part 2)** |  | 1d? | 2016-10-12 | 2016-10-12 | 46d |
| 104 | 1.3.4.2.1 | Create Group Managerment Module Test Case |  | 1d? | 2016-10-12 | 2016-10-12 | 46d |
| 105 | 1.3.4.2.2 | Create Other Managerment Module Test Case |  | 1d? | 2016-10-12 | 2016-10-12 | 46d |
| 106 | 1.3.4.3 | Execute Test | manual | 1d? | 2016-10-12 | 2016-10-12 |  |
| 107 | 1.3.4.4 | Create Test Report | manual | 1d? | 2016-10-12 | 2016-10-12 |  |
| 108 | 1.3.4.5 | Testing Complete (Part 1) | milestone, manual | 0d | 2016-10-12 | 2016-10-12 |  |
| 109 | 1.3.5 | Evalution | manual | 1d? | 2016-10-12 | 2016-10-12 |  |
| 110 | 1.3.6 | End iterative 2 | manual | 1d? | 2016-10-12 | 2016-10-12 |  |

| ID | WBS | Task | Type | Duration | Start | Finish | Total slack |
| --- | --- | --- | --- | --- | --- | --- | --- |
| 111 | 1.4 | **Implement 3** |  | 1d? | 2016-09-05 | 2016-09-05 | 0d |
| 112 | 1.4.1 | Requirement | manual | 1d? | 2016-09-05 | 2016-09-05 |  |
| 113 | 1.4.2 | Analysis and Design | manual | 1d | 2016-09-05 | 2016-09-05 |  |
| 114 | 1.4.3 | **Development** |  | 1d? | 2016-09-05 | 2016-09-05 | 73d |
| 115 | 1.4.3.1 | Code-Unit Test & Prototypes |  | 1d? | 2016-09-05 | 2016-09-05 | 73d |
| 116 | 1.4.4 | Testing | manual | 1d | 2016-09-05 | 2016-09-05 |  |
| 117 | 1.4.5 | Evalution | manual | 1d | 2016-09-05 | 2016-09-05 |  |
| 118 | 1.4.6 | End iterative 2 | manual | 1d | 2016-09-05 | 2016-09-05 |  |
