Schedule from MS Project, 2016-09-05 to 2016-12-26.

## Calendars

- Standard: Mon-Fri 08:00-12:00, 13:00-17:00; Sat-Sun off.

## Schedule

| ID | WBS | Task | Type | Duration | Start | Finish | Predecessors | Total slack | Free slack | Constraint |
| --- | --- | --- | --- | --- | --- | --- | --- | --- | --- | --- |
| 1 | 1 | **Bookaholic Social Network** |  | 81d? | 2016-09-05 08:00 | 2016-12-26 17:00 |  | 0d |  |  |
| 2 | 1.1 | **Initial** |  | 9d | 2016-09-05 08:00 | 2016-09-15 17:00 |  | 6d | 0d |  |
| 3 | 1.1.1 | Form up team roles |  | 0.5d | 2016-09-05 08:00 | 2016-09-05 12:00 |  | 8.5d | 0d | start no earlier than 2016-09-05 08:00 |
| 4 | 1.1.2 | Select project idea |  | 0.5d | 2016-09-05 13:00 | 2016-09-05 17:00 | 3 | 8.5d | 0d | start no earlier than 2016-09-05 08:00 |
| 5 | 1.1.3 | **Develop project idea** |  | 6d | 2016-09-06 08:00 | 2016-09-13 17:00 | 4 | 8d | 0d |  |
| 6 | 1.1.3.1 | Define Project Scope |  | 0.5d | 2016-09-06 08:00 | 2016-09-06 12:00 |  | 8.5d | 0d | start no earlier than 2016-09-06 08:00 |
| 7 | 1.1.3.2 | Define Project Features |  | 0.5d | 2016-09-06 08:00 | 2016-09-06 12:00 | 6SS | 8.5d | 0.5d | start no earlier than 2016-09-06 08:00 |
| 8 | 1.1.3.3 | Create Project Introduction |  | 1d | 2016-09-07 08:00 | 2016-09-07 17:00 | 7 | 11d | 0d | start no earlier than 2016-09-07 08:00 |
| 9 | 1.1.3.4 | Review Project Introduction |  | 0.5d | 2016-09-08 08:00 | 2016-09-08 12:00 | 8 | 11d | 0d |  |
| 10 | 1.1.3.5 | Update Project Introduction |  | 0.5d | 2016-09-08 13:00 | 2016-09-08 17:00 | 9 | 11d |  | start no earlier than 2016-09-08 08:00 |
| 11 | 1.1.3.6 | Create Mockup (Part 1) |  | 5d | 2016-09-07 08:00 | 2016-09-13 17:00 | 7 | 8d |  | start no earlier than 2016-09-07 08:00 |
| 12 | 1.1.4 | **Environment** |  | 1d | 2016-09-06 08:00 | 2016-09-06 17:00 | 5SS | 13d |  |  |
| 13 | 1.1.4.1 | Install tool & environment |  | 0.5d | 2016-09-06 08:00 | 2016-09-06 12:00 |  | 13d | 0d | start no earlier than 2016-09-06 08:00 |
| 14 | 1.1.4.2 | Training using tools & environment |  | 0.5d | 2016-09-06 13:00 | 2016-09-06 17:00 | 13 | 13d |  | start no earlier than 2016-09-06 08:00 |
| 15 | 1.1.5 | **Technology Research (Part 1)** |  | 4d | 2016-09-09 08:00 | 2016-09-14 17:00 |  | 6d | 0d |  |
| 16 | 1.1.5.1 | Study .net MVC5 |  | 4d | 2016-09-09 08:00 | 2016-09-14 17:00 |  | 6d | 0d | start no earlier than 2016-09-09 08:00 |
| 17 | 1.1.5.2 | Study Bootstrap, html5, CSS3 |  | 4d | 2016-09-09 08:00 | 2016-09-14 17:00 | 16SS | 6d |  | start no earlier than 2016-09-09 08:00 |
| 18 | 1.1.6 | Kick-off meeting |  | 1d | 2016-09-15 08:00 | 2016-09-15 17:00 | 15 | 6d | 0d |  |
| 19 | 1.1.7 | End of initiation phase | milestone | 0d | 2016-09-15 17:00 | 2016-09-15 17:00 | 18 | 6d |  | start no earlier than 2016-09-15 08:00 |
| 20 | 1.2 | **Implement 1** |  | 25d? | 2016-09-16 08:00 | 2016-10-20 17:00 | 2 | 2d | 0d |  |
| 21 | 1.2.1 | **Requirement** |  | 1d | 2016-09-16 08:00 | 2016-09-16 17:00 |  | 13d | 0d |  |
| 22 | 1.2.1.1 | Define User Requirement (Part 1) |  | 1d | 2016-09-16 08:00 | 2016-09-16 17:00 |  | 13d |  | start no earlier than 2016-09-16 08:00 |
| 23 | 1.2.2 | **Analysis & design** |  | 14d | 2016-09-19 08:00 | 2016-10-07 08:00 | 21 | 12d | 0d |  |
| 24 | 1.2.2.1 | **Create Project Plan** |  | 2d | 2016-09-19 08:00 | 2016-09-20 17:00 |  | 13d | 0d |  |
| 25 | 1.2.2.1.1 | Create PP Review Checklist |  | 0.5d | 2016-09-19 08:00 | 2016-09-19 12:00 |  | 13d | 0d |  |
| 26 | 1.2.2.1.2 | Create Project Plan in MS Word |  | 1d | 2016-09-19 08:00 | 2016-09-19 17:00 | 25SS | 14d |  |  |
| 27 | 1.2.2.1.3 | Create Project Schedule in .mpp file |  | 2d | 2016-09-19 08:00 | 2016-09-20 17:00 | 25SS | 13d |  |  |
| 28 | 1.2.2.1.4 | Create CM Plan |  | 1d | 2016-09-19 08:00 | 2016-09-19 17:00 | 25SS | 13d | 0d |  |
| 29 | 1.2.2.1.5 | Review Project Plan, CM Plan, Schedule |  | 0.5d | 2016-09-20 08:00 | 2016-09-20 12:00 | 28 | 13d | 0d |  |
| 30 | 1.2.2.1.6 | Update Project Plan, CM Plan, Schedule |  | 0.5d | 2016-09-20 13:00 | 2016-09-20 17:00 | 29 | 13d | 0d | start no earlier than 2016-09-16 08:00 |
| 31 | 1.2.2.1.7 | Complete Project Plan | milestone | 0d | 2016-09-20 17:00 | 2016-09-20 17:00 | 30 | 13d |  | start no earlier than 2016-09-20 08:00 |

| ID | WBS | Task | Type | Duration | Start | Finish | Predecessors | Total slack | Free slack | Constraint |
| --- | --- | --- | --- | --- | --- | --- | --- | --- | --- | --- |
| 32 | 1.2.2.2 | **User Requirement Specification (Part 1)** |  | 2d | 2016-09-21 08:00 | 2016-09-23 08:00 | 24 | 13d | 0d |  |
| 33 | 1.2.2.2.1 | Create SRS Review Checklist (Part 1) |  | 1d | 2016-09-21 08:00 | 2016-09-21 17:00 |  | 13d | 0d | start no earlier than 2016-09-16 08:00 |
| 34 | 1.2.2.2.2 | Create User Requirement Specfication (Part 1) |  | 1d | 2016-09-21 08:00 | 2016-09-21 17:00 | 33SS | 13d | 0d | start no earlier than 2016-09-16 08:00 |
| 35 | 1.2.2.2.3 | Review User Requirement Specfication (Part 1) |  | 0.5d | 2016-09-22 08:00 | 2016-09-22 12:00 | 34 | 13d | 0d |  |
| 36 | 1.2.2.2.4 | Update User Requirement Specfication (Part 1) |  | 0.5d | 2016-09-22 13:00 | 2016-09-22 17:00 | 35 | 13d | 0d | start no earlier than 2016-09-15 08:00 |
| 37 | 1.2.2.2.5 | Complete User Requirement Specfication (Part 1) | milestone | 0d | 2016-09-23 08:00 | 2016-09-23 08:00 | 36 | 13d |  | start no earlier than 2016-09-23 08:00 |
| 38 | 1.2.2.3 | **Q&A Sheet** |  | 2d | 2016-09-23 08:00 | 2016-09-26 17:00 | 32 | 13d | 0d |  |
| 39 | 1.2.2.3.1 | Create Q&A Sheet |  | 0.5d | 2016-09-23 08:00 | 2016-09-23 12:00 |  | 13d | 0d | start no earlier than 2016-09-19 08:00 |
| 40 | 1.2.2.3.2 | Review Q&A Sheet |  | 0.3d | 2016-09-23 13:00 | 2016-09-23 15:24 | 39 | 13d | 0d | start no earlier than 2016-09-19 08:00 |
| 41 | 1.2.2.3.3 | Update Q&A Sheet |  | 0.2d | 2016-09-23 15:24 | 2016-09-23 17:00 | 40 | 13d | 0d | start no earlier than 2016-09-19 08:00 |
| 42 | 1.2.2.3.4 | Translate Q&A Sheet to Japanese |  | 1d | 2016-09-26 08:00 | 2016-09-26 17:00 | 41 | 13d | 0d | start no earlier than 2016-09-26 08:00 |
| 43 | 1.2.2.3.5 | Complete Q&A Sheet | milestone | 0d | 2016-09-26 17:00 | 2016-09-26 17:00 | 42 | 13d |  |  |
| 44 | 1.2.2.4 | Create Progess Report 1 |  | 1d | 2016-09-27 08:00 | 2016-09-27 17:00 | 38 | 19d | 0d |  |
| 45 | 1.2.2.5 | Submit Report 1 | milestone | 0d | 2016-09-27 17:00 | 2016-09-27 17:00 | 44 | 19d |  | start no earlier than 2016-09-27 08:00 |
| 46 | 1.2.2.6 | **Design** |  | 7d | 2016-09-28 08:00 | 2016-10-06 17:00 | 38 | 12d |  |  |
| 47 | 1.2.2.6.1 | Create Architecture Design |  | 3d | 2016-09-28 08:00 | 2016-09-30 17:00 |  | 12d | 0d | start no earlier than 2016-09-28 08:00 |
| 48 | 1.2.2.6.2 | Create Mockup (Part 2) |  | 7d | 2016-09-28 08:00 | 2016-10-06 17:00 | 47SS | 12d |  | start no earlier than 2016-09-28 08:00 |
| 49 | 1.2.2.6.3 | Database Design |  | 3d | 2016-09-28 08:00 | 2016-09-30 17:00 | 47SS | 12d | 0d | start no earlier than 2016-09-28 08:00 |
| 50 | 1.2.2.6.4 | Class/Component Design |  | 3d | 2016-10-03 08:00 | 2016-10-05 17:00 | 49 | 12d | 0d |  |
| 51 | 1.2.2.6.5 | Create Design Review Checklist |  | 0.5d | 2016-10-06 08:00 | 2016-10-06 12:00 | 50 | 12d | 0d |  |
| 52 | 1.2.2.6.6 | Create Progress Report 2 |  | 0.5d | 2016-10-06 13:00 | 2016-10-06 17:00 | 51 | 12d | 0d |  |
| 53 | 1.2.2.7 | Create Coding Checklist (Part 1) |  | 0.5d | 2016-09-27 08:00 | 2016-09-27 12:00 | 38 | 19.5d |  |  |
| 54 | 1.2.2.8 | Submit Report 2 | milestone | 0d | 2016-10-07 08:00 | 2016-10-07 08:00 | 52 | 12d |  | start no earlier than 2016-10-07 08:00 |
| 55 | 1.2.3 | **Development** |  | 17d? | 2016-09-19 08:00 | 2016-10-11 17:00 | 23SS | 4d | 0d |  |
| 56 | 1.2.3.1 | **Technology Research (Part 2)** |  | 3d | 2016-09-19 08:00 | 2016-09-21 17:00 |  | 5d | 0d |  |
| 57 | 1.2.3.1.1 | Google API |  | 1d | 2016-09-19 08:00 | 2016-09-19 17:00 |  | 5d | 0d | start no earlier than 2016-09-14 08:00 |
| 58 | 1.2.3.1.2 | Facebook API |  | 1d | 2016-09-19 08:00 | 2016-09-19 17:00 | 57SS | 5d | 0d |  |
| 59 | 1.2.3.1.3 | .net SignalR |  | 2d | 2016-09-20 08:00 | 2016-09-21 17:00 | 58 | 5d |  |  |
| 60 | 1.2.3.2 | Create Unit Test Checklist (Part 1) |  | 0.5d | 2016-09-19 08:00 | 2016-09-19 12:00 | 56SS | 20.5d |  |  |

| ID | WBS | Task | Type | Duration | Start | Finish | Predecessors | Total slack | Free slack | Constraint |
| --- | --- | --- | --- | --- | --- | --- | --- | --- | --- | --- |
| 61 | 1.2.3.3 | **Code & Unit Test** |  | 14d? | 2016-09-22 08:00 | 2016-10-11 17:00 | 56 | 4d |  |  |
| 62 | 1.2.3.3.1 | **Admin Module (Part 1)** |  | 1d | 2016-09-22 08:00 | 2016-09-22 17:00 |  | 5d | 0d |  |
| 63 | 1.2.3.3.1.1 | Book Managerment Feature |  | 0.5d | 2016-09-22 08:00 | 2016-09-22 12:00 |  | 5d | 0d |  |
| 64 | 1.2.3.3.1.2 | Publisher Managerment Feature |  | 0.5d | 2016-09-22 08:00 | 2016-09-22 12:00 | 63SS | 5.5d |  |  |
| 65 | 1.2.3.3.1.3 | Slide Managerment Feature |  | 1d | 2016-09-22 08:00 | 2016-09-22 17:00 | 63SS | 5d |  |  |
| 66 | 1.2.3.3.2 | **Account Managerment Module** |  | 4d? | 2016-09-23 08:00 | 2016-09-28 17:00 | 62 | 5d | 0d |  |
| 67 | 1.2.3.3.2.1 | Account Regist Function |  | 1d? | 2016-09-23 08:00 | 2016-09-23 17:00 |  | 5d | 0d |  |
| 68 | 1.2.3.3.2.2 | LogIn/LogOut Feature |  | 3d | 2016-09-26 08:00 | 2016-09-28 17:00 | 67 | 5d |  |  |
| 69 | 1.2.3.3.2.3 | Edit Profile Function |  | 0.5d? | 2016-09-23 08:00 | 2016-09-23 12:00 | 67SS | 8.5d |  |  |
| 70 | 1.2.3.3.2.4 | Reset Password Function |  | 0.5d | 2016-09-23 08:00 | 2016-09-23 12:00 | 67SS | 8.5d |  |  |
| 71 | 1.2.3.3.3 | **System Module (Part 1)** |  | 3d | 2016-09-23 08:00 | 2016-09-27 17:00 | 66SS | 14d |  |  |
| 72 | 1.2.3.3.3.1 | Send Mail Feature |  | 3d | 2016-09-23 08:00 | 2016-09-27 17:00 |  | 14d |  |  |
| 73 | 1.2.3.3.4 | **Recommendation Managerment Module (Part 1)** |  | 9d | 2016-09-29 08:00 | 2016-10-11 17:00 | 66 | 4d |  |  |
| 74 | 1.2.3.3.4.1 | Management Post Feature |  | 8d | 2016-09-29 08:00 | 2016-10-10 17:00 |  | 5d |  |  |
| 75 | 1.2.3.3.4.2 | Management Comment Feature |  | 4d | 2016-10-06 08:00 | 2016-10-11 17:00 |  | 4d |  | start no earlier than 2016-10-06 08:00 |
| 76 | 1.2.3.4 | **Code Screen Module** |  | 5d? | 2016-09-19 08:00 | 2016-09-23 17:00 | 56SS | 16d |  |  |
| 77 | 1.2.3.4.1 | "Trang Chủ"Screen |  | 2d | 2016-09-19 08:00 | 2016-09-20 17:00 |  | 16d | 0d | start no earlier than 2016-09-19 08:00 |
| 78 | 1.2.3.4.2 | "Trang cá nhân"Screen |  | 1d? | 2016-09-21 08:00 | 2016-09-21 17:00 | 77 | 16d | 0d | start no earlier than 2016-09-19 08:00 |
| 79 | 1.2.3.4.3 | "Đăng Nhập"Screen |  | 1d? | 2016-09-22 08:00 | 2016-09-22 17:00 | 78 | 16d | 0d |  |
| 80 | 1.2.3.4.4 | "Tác giả"Screen |  | 2d | 2016-09-22 08:00 | 2016-09-23 17:00 | 79SS | 16d |  |  |
| 81 | 1.2.4 | **Testing** |  | 6d? | 2016-10-12 08:00 | 2016-10-20 08:00 | 55 | 2d | 0d |  |
| 82 | 1.2.4.1 | Create Test Plan (Part 1) |  | 1d? | 2016-10-12 08:00 | 2016-10-12 17:00 |  | 5d | 0d |  |
| 83 | 1.2.4.2 | Create Test Plan Checklist (Part 1) |  | 0.5d | 2016-10-13 08:00 | 2016-10-13 12:00 | 82 | 5d | 0d |  |
| 84 | 1.2.4.3 | **Writing Test Case (Part 1)** |  | 1.5d | 2016-10-13 13:00 | 2016-10-14 17:00 | 83 | 5d | 0d |  |
| 85 | 1.2.4.3.1 | Create Admin Module Test Case (Part 1) |  | 0.5d | 2016-10-13 13:00 | 2016-10-13 17:00 |  | 5d | 0d |  |
| 86 | 1.2.4.3.2 | Create Account Managerment Module Test Case (Part 1) |  | 0.5d | 2016-10-14 08:00 | 2016-10-14 12:00 | 85 | 5d | 0d |  |
| 87 | 1.2.4.3.3 | Create System Module Test Case (Part 1) |  | 0.5d | 2016-10-14 08:00 | 2016-10-14 12:00 | 86SS | 5.5d |  |  |
| 88 | 1.2.4.3.4 | Create Recommentdation Management Module Test Case (Part 1) |  | 0.5d | 2016-10-14 13:00 | 2016-10-14 17:00 | 86 | 5d |  |  |
| 89 | 1.2.4.4 | Create Test Case Checklist (Part 1) |  | 1.5d? | 2016-10-13 13:00 | 2016-10-14 17:00 | 84SS | 2.5d | 0d |  |
| 90 | 1.2.4.5 | Execute Test (Part 1) |  | 2d | 2016-10-17 08:00 | 2016-10-18 17:00 | 89 | 2.5d | 0d |  |
| 91 | 1.2.4.6 | Create Test Report (Part 1) |  | 0.5d | 2016-10-19 08:00 | 2016-10-19 12:00 | 90 | 2.5d | 0.5d |  |
| 92 | 1.2.4.7 | Testing Part 1 Complete | milestone | 0d | 2016-10-20 08:00 | 2016-10-20 08:00 | 91 | 2d |  | start no earlier than 2016-10-20 08:00 |
| 93 | 1.2.5 | Evalution |  | 1d? | 2016-10-20 08:00 | 2016-10-20 17:00 | 81 | 2d | 0d |  |
| 94 | 1.2.6 | End Implement 1 | milestone | 0d | 2016-10-20 17:00 | 2016-10-20 17:00 | 93 | 2d |  |  |

| ID | WBS | Task | Type | Duration | Start | Finish | Predecessors | Total slack | Free slack | Constraint |
| --- | --- | --- | --- | --- | --- | --- | --- | --- | --- | --- |
| 95 | 1.3 | **Implement 2** |  | 20d? | 2016-10-21 08:00 | 2016-11-17 17:00 | 20 | 1d | 0d |  |
| 96 | 1.3.1 | **Requirement** |  | 1d? | 2016-10-21 08:00 | 2016-10-21 17:00 |  | 2d | 0d |  |
| 97 | 1.3.1.1 | Define User Requirement (Part 2) |  | 1d? | 2016-10-21 08:00 | 2016-10-21 17:00 |  | 2d |  |  |
| 98 | 1.3.2 | **Analysis & design** |  | 3d? | 2016-10-24 08:00 | 2016-10-26 17:00 | 96 | 2d | 0d |  |
| 99 | 1.3.2.1 | **User Requirement Specification (Part 2)** |  | 2d? | 2016-10-24 08:00 | 2016-10-26 08:00 |  | 2d | 0d |  |
| 100 | 1.3.2.1.1 | Create SRS Review Checklist (Part 2) |  | 1d? | 2016-10-24 08:00 | 2016-10-24 17:00 |  | 2d | 0d |  |
| 101 | 1.3.2.1.2 | Create User Requirement Sepecification (Part 2) |  | 1d? | 2016-10-24 08:00 | 2016-10-24 17:00 | 100SS | 2d | 0d |  |
| 102 | 1.3.2.1.3 | Review User Requirement Specification (Part 2) |  | 0.5d | 2016-10-25 08:00 | 2016-10-25 12:00 | 101 | 2d | 0d |  |
| 103 | 1.3.2.1.4 | Update User Requirement Specification (Part 2) |  | 0.5d? | 2016-10-25 13:00 | 2016-10-25 17:00 | 102 | 2d | 0d |  |
| 104 | 1.3.2.1.5 | Complete User Requirement Specification (Part 2) | milestone | 0d | 2016-10-26 08:00 | 2016-10-26 08:00 | 103 | 2d |  | start no earlier than 2016-10-26 08:00 |
| 105 | 1.3.2.2 | Create Coding Checklist (Part 2) |  | 1d? | 2016-10-26 08:00 | 2016-10-26 17:00 | 99 | 2d |  |  |
| 106 | 1.3.3 | **Development** |  | 10d? | 2016-10-27 08:00 | 2016-11-09 17:00 | 98 | 2d | 0d |  |
| 107 | 1.3.3.1 | Create Unit Test Checklist (Part 2) |  | 0.5d | 2016-10-27 08:00 | 2016-10-27 12:00 |  | 11.5d |  |  |
| 108 | 1.3.3.2 | **Code & Unit Test** |  | 10d? | 2016-10-27 08:00 | 2016-11-09 17:00 |  | 2d | 0d |  |
| 109 | 1.3.3.2.1 | **Common Module** |  | 2d? | 2016-10-27 08:00 | 2016-10-28 17:00 |  | 2d | 0d |  |
| 110 | 1.3.3.2.1.1 | User Search Function |  | 2d | 2016-10-27 08:00 | 2016-10-28 17:00 |  | 2d | 0d |  |
| 111 | 1.3.3.2.1.2 | User Rate Book Function |  | 2d | 2016-10-27 08:00 | 2016-10-28 17:00 | 110SS | 2d |  |  |
| 112 | 1.3.3.2.1.3 | Suggest Book/Author Function |  | 1d? | 2016-10-27 08:00 | 2016-10-27 17:00 | 110SS | 3d |  |  |
| 113 | 1.3.3.2.2 | **Group Managerment Module** |  | 3d? | 2016-10-31 08:00 | 2016-11-02 17:00 | 109 | 2d | 0d |  |
| 114 | 1.3.3.2.2.1 | Group Manage Feature |  | 1d | 2016-10-31 08:00 | 2016-10-31 17:00 |  | 2d | 0d |  |
| 115 | 1.3.3.2.2.2 | Manage Group Member Feature |  | 1d? | 2016-11-01 08:00 | 2016-11-01 17:00 | 114 | 2d | 0d |  |
| 116 | 1.3.3.2.2.3 | Manage Group Post Feature |  | 1d? | 2016-11-02 08:00 | 2016-11-02 17:00 | 115 | 2d |  |  |
| 117 | 1.3.3.2.3 | **Interaction Managerment Module** |  | 4d | 2016-11-03 08:00 | 2016-11-08 17:00 | 113 | 2d | 0d |  |
| 118 | 1.3.3.2.3.1 | Interact With Other Accounts Feature |  | 4d | 2016-11-03 08:00 | 2016-11-08 17:00 |  | 2d | 0d |  |
| 119 | 1.3.3.2.3.2 | Interact With Group Feature |  | 4d | 2016-11-03 08:00 | 2016-11-08 17:00 | 118SS | 2d |  |  |

| ID | WBS | Task | Type | Duration | Start | Finish | Predecessors | Total slack | Free slack |
| --- | --- | --- | --- | --- | --- | --- | --- | --- | --- |
| 120 | 1.3.3.2.4 | **Recommendation Managerment Module (Part 2)** |  | 1d? | 2016-11-09 08:00 | 2016-11-09 17:00 | 117 | 2d |  |
| 121 | 1.3.3.2.4.1 | Manage Reply-Comment Function |  | 1d? | 2016-11-09 08:00 | 2016-11-09 17:00 |  | 2d |  |
| 122 | 1.3.3.3 | **Code Screen Module** |  | 4d | 2016-10-27 08:00 | 2016-11-01 17:00 | 108SS | 8d |  |
| 123 | 1.3.3.3.1 | "Admin Managerment" Screen |  | 2d | 2016-10-27 08:00 | 2016-10-28 17:00 |  | 8d | 0d |
| 124 | 1.3.3.3.2 | "Group Managerment" Screen |  | 2d | 2016-10-31 08:00 | 2016-11-01 17:00 | 123 | 8d |  |
| 125 | 1.3.4 | **Testing** |  | 5d | 2016-11-10 08:00 | 2016-11-16 17:00 | 106 | 1d | 0d |
| 126 | 1.3.4.1 | Create Test Plan (Part 2) |  | 0.5d | 2016-11-10 08:00 | 2016-11-10 12:00 |  | 3d | 0d |
| 127 | 1.3.4.2 | Create Test Plan Checklist (Part 2) |  | 0.5d | 2016-11-10 13:00 | 2016-11-10 17:00 | 126 | 3d | 0d |
| 128 | 1.3.4.3 | **Writing Test Case (Part 2)** |  | 2d | 2016-11-11 08:00 | 2016-11-14 17:00 | 127 | 3d | 0d |
| 129 | 1.3.4.3.1 | Create Common Module Test Case |  | 0.5d | 2016-11-11 08:00 | 2016-11-11 12:00 |  | 3d | 0d |
| 130 | 1.3.4.3.2 | Create Group Managerment Module Test Case |  | 0.5d | 2016-11-11 13:00 | 2016-11-11 17:00 | 129 | 3d | 0d |
| 131 | 1.3.4.3.3 | Create Interaction Managerment Module Test Case |  | 0.5d | 2016-11-14 08:00 | 2016-11-14 12:00 | 130 | 3d | 0d |
| 132 | 1.3.4.3.4 | Create Recommendation Managerment Module Test Case (Part 2) |  | 0.5d | 2016-11-14 13:00 | 2016-11-14 17:00 | 131 | 3d |  |
| 133 | 1.3.4.4 | Create Test Case Checklist (Part 2) |  | 2d | 2016-11-11 08:00 | 2016-11-14 17:00 | 128SS | 1d | 0d |
| 134 | 1.3.4.5 | Execute Test (Part 2) |  | 1.5d | 2016-11-15 08:00 | 2016-11-16 12:00 | 133 | 1d | 0d |
| 135 | 1.3.4.6 | Create Test Report (Part 2) |  | 0.5d | 2016-11-16 13:00 | 2016-11-16 17:00 | 134 | 1d | 0d |
| 136 | 1.3.4.7 | Testing Part 2 Complete | milestone | 0d | 2016-11-16 17:00 | 2016-11-16 17:00 | 135 | 1d |  |
| 137 | 1.3.5 | Create Process Report 3 |  | 0.5d | 2016-11-15 08:00 | 2016-11-15 12:00 | 84, 82, 126, 128 | 3.5d | 0d |
| 138 | 1.3.6 | Submit Report 3 | milestone | 0d | 2016-11-15 12:00 | 2016-11-15 12:00 | 137 | 3.5d | 0d |
| 139 | 1.3.7 | Submit Report 4 | milestone | 0d | 2016-11-15 12:00 | 2016-11-15 12:00 | 138 | 3.5d |  |
| 140 | 1.3.8 | Evalution |  | 1d? | 2016-11-17 08:00 | 2016-11-17 17:00 | 125 | 1d | 0d |
| 141 | 1.3.9 | End Implement 2 | milestone | 0d | 2016-11-17 17:00 | 2016-11-17 17:00 | 140 | 1d |  |
| 142 | 1.4 | **Implement 3** |  | 18.5d? | 2016-11-18 08:00 | 2016-12-14 12:00 | 95 | 0d |  |
| 143 | 1.4.1 | **Requirement** |  | 1d? | 2016-11-18 08:00 | 2016-11-18 17:00 |  | 1d | 0d |
| 144 | 1.4.1.1 | Define User Requirement (Part 3) |  | 1d? | 2016-11-18 08:00 | 2016-11-18 17:00 |  | 1d |  |

| ID | WBS | Task | Type | Duration | Start | Finish | Predecessors | Total slack | Free slack |
| --- | --- | --- | --- | --- | --- | --- | --- | --- | --- |
| 145 | 1.4.2 | **Analysis & design** |  | 2d | 2016-11-21 08:00 | 2016-11-22 17:00 | 143 | 1d | 0d |
| 146 | 1.4.2.1 | **User Requirement Specification (Part 3)** |  | 1.5d | 2016-11-21 08:00 | 2016-11-22 12:00 |  | 1d | 0d |
| 147 | 1.4.2.1.1 | Create SRS Review Checklist (Part 3) |  | 0.5d | 2016-11-21 08:00 | 2016-11-21 12:00 |  | 1d | 0d |
| 148 | 1.4.2.1.2 | Create User Requirement Sepecification (Part 3) |  | 0.5d | 2016-11-21 08:00 | 2016-11-21 12:00 | 147SS | 1d | 0d |
| 149 | 1.4.2.1.3 | Review User Requirement Specification (Part 3) |  | 0.5d | 2016-11-21 13:00 | 2016-11-21 17:00 | 148 | 1d | 0d |
| 150 | 1.4.2.1.4 | Update User Requirement Specification (Part 3) |  | 0.5d | 2016-11-22 08:00 | 2016-11-22 12:00 | 149 | 1d | 0d |
| 151 | 1.4.2.1.5 | Complete User Requirement Specification (Part 3) | milestone | 0d | 2016-11-22 12:00 | 2016-11-22 12:00 | 150 | 1d |  |
| 152 | 1.4.2.2 | Create Coding Checklist (Part 3) |  | 0.5d | 2016-11-22 13:00 | 2016-11-22 17:00 | 146 | 1d |  |
| 153 | 1.4.3 | **Development** |  | 10d? | 2016-11-23 08:00 | 2016-12-06 17:00 | 145 | 1d | 0d |
| 154 | 1.4.3.1 | **Technology Research (Part 3)** |  | 1d? | 2016-11-23 08:00 | 2016-11-23 17:00 |  | 10d | 0d |
| 155 | 1.4.3.1.1 | Generate chart in .net |  | 1d? | 2016-11-23 08:00 | 2016-11-23 17:00 |  | 10d |  |
| 156 | 1.4.3.2 | Create Unit Test Checklist (Part 3) |  | 1d? | 2016-11-23 08:00 | 2016-11-23 17:00 | 154SS | 1d | 0d |
| 157 | 1.4.3.3 | **Code & Unit Test** |  | 9d | 2016-11-24 08:00 | 2016-12-06 17:00 | 156 | 1d | 0d |
| 158 | 1.4.3.3.1 | **System Module (Part 2)** |  | 3d | 2016-11-24 08:00 | 2016-11-28 17:00 |  | 1d | 0d |
| 159 | 1.4.3.3.1.1 | Statistic Feature |  | 3d | 2016-11-24 08:00 | 2016-11-28 17:00 |  | 1d |  |
| 160 | 1.4.3.3.2 | **Admin Module (Part 2)** |  | 6d | 2016-11-29 08:00 | 2016-12-06 17:00 | 158 | 1d |  |
| 161 | 1.4.3.3.2.1 | Manage User Account Feature |  | 3d | 2016-11-29 08:00 | 2016-12-01 17:00 |  | 1d | 0d |
| 162 | 1.4.3.3.2.2 | View Statistic Feature |  | 3d | 2016-12-02 08:00 | 2016-12-06 17:00 | 161 | 1d |  |
| 163 | 1.4.4 | **Testing** |  | 4.5d? | 2016-12-07 08:00 | 2016-12-13 12:00 | 153 | 0d |  |
| 164 | 1.4.4.1 | Create Test Plan (Part 3) |  | 0.5d | 2016-12-07 08:00 | 2016-12-07 12:00 |  | 2.5d | 0d |
| 165 | 1.4.4.2 | Create Test Plan Checklist (Part 3) |  | 0.5d | 2016-12-07 13:00 | 2016-12-07 17:00 | 164 | 2.5d | 0d |
| 166 | 1.4.4.3 | **Writing Test Case (Part 3)** |  | 1d | 2016-12-08 08:00 | 2016-12-08 17:00 | 165 | 2.5d | 0d |
| 167 | 1.4.4.3.1 | Create System Module Test Case (Part 2) |  | 0.5d | 2016-12-08 08:00 | 2016-12-08 12:00 |  | 2.5d | 0d |
| 168 | 1.4.4.3.2 | Create Admin Module Test Case (Part 2) |  | 0.5d | 2016-12-08 13:00 | 2016-12-08 17:00 | 167 | 2.5d |  |
| 169 | 1.4.4.4 | Create Test Case Checklist (Part 3) |  | 1d? | 2016-12-08 08:00 | 2016-12-08 17:00 | 166SS | 0d |  |
| 170 | 1.4.4.5 | Execute Test (Part 3) |  | 2d | 2016-12-09 08:00 | 2016-12-12 17:00 | 169 | 0d |  |
| 171 | 1.4.4.6 | Create Test Report (Part 3) |  | 0.5d | 2016-12-13 08:00 | 2016-12-13 12:00 | 170 | 0d |  |
| 172 | 1.4.4.7 | Testing Part 3 Complete | milestone | 0d | 2016-12-13 12:00 | 2016-12-13 12:00 | 171 | 0d |  |
| 173 | 1.4.5 | Create Quality Report |  | 1d? | 2016-12-13 13:00 | 2016-12-14 12:00 | 163 | 0d |  |
| 174 | 1.4.6 | Create Process Report 5 |  | 0.5d | 2016-12-07 08:00 | 2016-12-07 12:00 | 61, 108, 157 | 5d | 0d |
| 175 | 1.4.7 | Submit Report 5 | milestone | 0d | 2016-12-07 12:00 | 2016-12-07 12:00 | 174 | 5d |  |
| 176 | 1.4.8 | Evalution |  | 1d? | 2016-12-13 13:00 | 2016-12-14 12:00 | 163 | 0d |  |
| 177 | 1.4.9 | End Implement 1 | milestone | 0d | 2016-12-14 12:00 | 2016-12-14 12:00 | 176 | 0d |  |

| ID | WBS | Task | Type | Duration | Start | Finish | Predecessors | Total slack |
| --- | --- | --- | --- | --- | --- | --- | --- | --- |
| 178 | 1.5 | **Termination** |  | 8.5d | 2016-12-14 13:00 | 2016-12-26 17:00 | 142 | 0d |
| 179 | 1.5.1 | Create lession learned |  | 0.5d | 2016-12-14 13:00 | 2016-12-14 17:00 |  | 0d |
| 180 | 1.5.2 | **Final Report Document (Report 6)** |  | 2d | 2016-12-15 08:00 | 2016-12-16 17:00 | 179 | 0d |
| 181 | 1.5.2.1 | Create Final Report document |  | 2d | 2016-12-15 08:00 | 2016-12-16 17:00 |  | 0d |
| 182 | 1.5.2.2 | Create Installing Guide |  | 1d | 2016-12-15 08:00 | 2016-12-15 17:00 | 181SS | 1d |
| 183 | 1.5.2.3 | Create User Guideline |  | 1d | 2016-12-15 08:00 | 2016-12-15 17:00 | 181SS | 1d |
| 184 | 1.5.2.4 | Create Project Result Assessment |  | 1d | 2016-12-15 08:00 | 2016-12-15 17:00 | 181SS | 1d |
| 185 | 1.5.2.5 | Create Slides for Final Presentation |  | 2d | 2016-12-15 08:00 | 2016-12-16 17:00 | 181SS | 0d |
| 186 | 1.5.3 | Submit all Final Documents and Source codes | milestone | 0d | 2016-12-16 17:00 | 2016-12-16 17:00 | 180 | 0d |
| 187 | 1.5.4 | **Pre-closing** |  | 4d | 2016-12-19 08:00 | 2016-12-22 17:00 | 186 | 0d |
| 188 | 1.5.4.1 | Trainning presentation |  | 4d | 2016-12-19 08:00 | 2016-12-22 17:00 |  | 0d |
| 189 | 1.5.5 | **Closing** |  | 2d | 2016-12-23 08:00 | 2016-12-26 17:00 | 187 | 0d |
| 190 | 1.5.5.1 | Presentation for Capstone Project |  | 2d | 2016-12-23 08:00 | 2016-12-26 17:00 |  | 0d |
| 191 | 1.5.5.2 | Complete Project | milestone | 0d | 2016-12-26 17:00 | 2016-12-26 17:00 | 190 | 0d |
